# ZLOTY2

Schedule from MS Project, 2020-06-03 to 2021-07-22, costs in $, A marks actual dates.

## Calendars

- Estándar: Mon-Fri 09:00-13:00, 15:00-19:00; Sat-Sun off.

## Resources

| Resource | Group | Rate | Cost per use | Notes |
| --- | --- | --- | --- | --- |
| Jonathan Sierra | Lider de planificacion- controlador de cambios | 7578 |  | ANALISTA DE SISTEMAS/ Analista de desempeño-despliegue |
| Geraldine Romerito | Líder de proyecto- FRONT END/Controlador de cambios / ANALISTA DE SISTEMAS | 7577 |  | Lider de proyecto- controlador de cambios / ANALISTA DE SISTEMAS |
| Kevin capera | Diseñador de Desarrollo- de interfaz | 7577 |  | ANALISTA DE SOFTWARE/ Diseñador de Desarrollo- de interfaz |
| Santiago Manjares | ANALISTA DE SOFTWARE/ Apoyo- pruebas | 7577 |  | ANALISTA DE SOFTWARE/ Apoyo- pruebas |
| Wilmer Perdomo | Administrador de base de datos | 7575 |  | ANALISTA DE SISTEMAS/ Administrador de base de datos |
| pc´s prestamo | PC | 40000 | 25000 | prestamos de equipos para la ejecucion del proyecto |
| AGUA | SERVICIOS | 5000 |  |  |
| GoDaddy | Software | 24000 |  | Aproximadamente entre $24.000 y $150.000 pesos colombianos al año (entre $2.000 y $12.500 mensuales) si contratas un plan básico para alojar un solo sitio web. Este tipo de planes suelen tener el nombre de Económico, Emprendedores o Sencillo. |
| Rise-1-OVHcloud | Software | 265256 |  | ·https://www.ovhcloud.com/es/bare-metal/rise/rise-1/ / Aloje su sitio web profesional, blog o foro en este servidor, equipado con procesador Intel Xeon de alta frecuencia. Este modelo también es adecuado para las empresas que quieren compartir archivos o contenido multimedia con sus trabajadores o clientes. / El stock de la gama Rise es limitado, por lo que su disponibilidad no está garantizada. |
| LUZ | SERVICIOS | 15000 |  |  |
| GAS | SERVICIOS | 5000 |  |  |
| PC empresa | PC |  | 8000 | i54740 / windows 10 / chrome / 8 RAM / 1 TB disco duro |

## Schedule

| ID | WBS | Task | Type | Duration | Start | Finish | Complete | Remaining | Total slack | Resources | Work | Actual work | Cost | Actual cost |
| --- | --- | --- | --- | --- | --- | --- | --- | --- | --- | --- | --- | --- | --- | --- |
| 1 | 1 | **DESARROLLO DEL SISTEMA DE INFORMCAION ZLOTY** |  | 297d | 2020-06-03 A | 2021-07-22 | 60% | 119.72d | 0d |  | 3972h | 2100h | 30,815,316 | 16,631,464 |
| 2 | 1.1 | **1. Viabilidad del proyecto** |  | 16d | 2020-06-03 A | 2020-06-24 A | 100% |  |  |  | 368h | 368h | 3,378,216 | 3,378,216 |
| 3 | 1.1.1 | **1.1 ANALISIS** |  | 16d | 2020-06-03 A | 2020-06-24 A | 100% |  |  |  | 368h | 368h | 3,378,216 | 3,378,216 |
| 4 | 1.1.1.1 | **1.1.1COMPONENTE METODOLOGICO** |  | 10d | 2020-06-03 A | 2020-06-16 A | 100% |  |  |  | 200h | 200h | 2,105,352 | 2,105,352 |
| 5 | 1.1.1.1.1 | 1.1.1.1 NOMBRE DEL PROYECTO | milestone, manual | 0d | 2020-06-03 A | 2020-06-03 A | 100% |  |  | Geraldine Romerito; Wilmer Perdomo; Jonathan Sierra; AGUA |  |  |  |  |
| 6 | 1.1.1.1.2 | 1.1.1.2 Objetivo general. | manual | 3d | 2020-06-03 A | 2020-06-05 A | 100% |  |  | Santiago Manjares; Wilmer Perdomo; pc´s prestamo [200%]; AGUA | 48h | 48h | 473,648 | 473,648 |
| 7 | 1.1.1.1.3 | 1.1.1.3 Objetivos específicos. | manual | 4d | 2020-06-08 A | 2020-06-11 A | 100% |  |  | Kevin capera; Jonathan Sierra; pc´s prestamo [300%]; AGUA | 64h | 64h | 634,960 | 634,960 |
| 8 | 1.1.1.1.4 | 1.1.1.4 Planteamiento del problema. | manual | 3d | 2020-06-11 A | 2020-06-15 A | 100% |  |  | Geraldine Romerito; Santiago Manjares; pc´s prestamo [200%]; AGUA | 48h | 48h | 473,696 | 473,696 |
| 9 | 1.1.1.1.5 | 1.1.1.5 Alcance del proyecto. | manual | 2d | 2020-06-15 A | 2020-06-16 A | 100% |  |  | Wilmer Perdomo; Kevin capera; pc´s prestamo [200%]; AGUA | 32h | 32h | 352,432 | 352,432 |
| 10 | 1.1.1.1.6 | 1.1.1.6 Justificación. | manual | 1d | 2020-06-16 A | 2020-06-16 A | 100% |  |  | Santiago Manjares; pc´s prestamo [200%]; AGUA | 8h | 8h | 170,616 | 170,616 |
| 11 | 1.1.1.2 | **1.1.2 LEVANTAMIENTO DE INFORMACION** |  | 6d | 2020-06-17 A | 2020-06-24 A | 100% |  |  |  | 168h | 168h | 1,272,864 | 1,272,864 |
| 12 | 1.1.1.2.1 | 1.1.2.1 ENTREVISTA | manual | 2d | 2020-06-17 A | 2020-06-18 A | 100% |  |  | Geraldine Romerito; Wilmer Perdomo; Jonathan Sierra; Santiago Manjares; Kevin capera | 80h | 80h | 606,144 | 606,144 |
| 13 | 1.1.1.2.2 | 1.1.2.2 OBSERVACION | manual | 1d | 2020-06-19 A | 2020-06-19 A | 100% |  |  | Geraldine Romerito; Wilmer Perdomo; Jonathan Sierra; Santiago Manjares; Kevin capera | 40h | 40h | 303,072 | 303,072 |
| 14 | 1.1.1.2.3 | 1.1.2.3 ENCUSTA | manual | 3d | 2020-06-22 A | 2020-06-24 A | 100% |  |  | Geraldine Romerito; Wilmer Perdomo | 48h | 48h | 363,648 | 363,648 |
| 15 | 1.2 | **2 PLANEACIÓN** |  | 27d | 2020-06-24 A | 2020-07-30 A | 100% |  |  |  | 432h | 432h | 3,273,232 | 3,273,232 |
| 16 | 1.2.1 | **2.1 Informe de Requerimientos (Estándar IEEE 830).** |  | 13d | 2020-06-24 A | 2020-07-10 A | 100% |  |  |  | 208h | 208h | 1,575,976 | 1,575,976 |
| 17 | 1.2.1.1 | 2.1.1 Requerimientos funcionales. | manual | 5d | 2020-06-24 A | 2020-06-30 A | 100% |  |  | Jonathan Sierra; Kevin capera | 80h | 80h | 606,200 | 606,200 |
| 18 | 1.2.1.2 | 2.1.2 Requerimientos No funcionales. | manual | 5d | 2020-07-01 A | 2020-07-07 A | 100% |  |  | Wilmer Perdomo; Santiago Manjares | 80h | 80h | 606,080 | 606,080 |
| 19 | 1.2.1.3 | 2.1.3 Especificaciones de casos de uso | manual | 3d | 2020-07-08 A | 2020-07-10 A | 100% |  |  | Santiago Manjares; Geraldine Romerito | 48h | 48h | 363,696 | 363,696 |
| 20 | 1.2.2 | **2.2 Mapa de procesos.** |  | 10d | 2020-07-13 A | 2020-07-24 A | 100% |  |  |  | 160h | 160h | 1,212,360 | 1,212,360 |
| 21 | 1.2.2.1 | 2.2.1 Mapa de procesos. | manual | 5d | 2020-07-13 A | 2020-07-17 A | 100% |  |  | Jonathan Sierra; Geraldine Romerito | 80h | 80h | 606,200 | 606,200 |
| 22 | 1.2.2.2 | 2.2.2 Diagrama de flujo de proceso BPMN | manual | 5d | 2020-07-20 A | 2020-07-24 A | 100% |  |  | Santiago Manjares; Kevin capera | 80h | 80h | 606,160 | 606,160 |
| 23 | 1.2.3 | **2.3 Modelo Entidad Relación.** |  | 4d | 2020-07-27 A | 2020-07-30 A | 100% |  |  |  | 64h | 64h | 484,896 | 484,896 |
| 24 | 1.2.3.1 | 2.3.1 MER. | manual | 4d | 2020-07-27 A | 2020-07-30 A | 100% |  |  | Wilmer Perdomo; Jonathan Sierra | 64h | 64h | 484,896 | 484,896 |

| ID | WBS | Task | Type | Duration | Start | Finish | Complete | Remaining | Total slack | Resources | Work | Actual work | Cost | Actual cost |
| --- | --- | --- | --- | --- | --- | --- | --- | --- | --- | --- | --- | --- | --- | --- |
| 25 | 1.3 | **3. EJECUCION** |  | 33d | 2020-07-13 A | 2020-08-26 A | 100% |  |  |  | 240h | 240h | 1,843,488 | 1,843,488 |
| 26 | 1.3.1 | **3.1 Base de Datos.** |  | 23d | 2020-07-13 A | 2020-08-12 A | 100% |  |  |  | 152h | 152h | 1,151,744 | 1,151,744 |
| 27 | 1.3.1.1 | 3.1.1 Construcción de la Base de Datos. | manual | 4d | 2020-07-31 A | 2020-08-05 A | 100% |  |  | Geraldine Romerito; Santiago Manjares | 64h | 64h | 484,928 | 484,928 |
| 28 | 1.3.1.2 | 3.1.2 Datos insertados en la Base de Datos. | manual | 5d | 2020-08-06 A | 2020-08-12 A | 100% |  |  | Jonathan Sierra; Kevin capera | 80h | 80h | 606,200 | 606,200 |
| 29 | 1.3.1.3 | 3.1.3 Consultas y Joins en la Base de Datos. | manual | 1d | 2020-07-13 A | 2020-07-13 A | 100% |  |  | Santiago Manjares | 8h | 8h | 60,616 | 60,616 |
| 30 | 1.3.2 | **3.2 Prototipo no funcional.** |  | 4d | 2020-08-14 A | 2020-08-19 A | 100% |  |  |  | 32h | 32h | 267,464 | 267,464 |
| 31 | 1.3.2.1 | 3.2.1 Mockup. | manual | 4d | 2020-08-14 A | 2020-08-19 A | 100% |  |  | Kevin capera; pc´s prestamo | 32h | 32h | 267,464 | 267,464 |
| 32 | 1.3.3 | **3.3 Codificación y manejo de CRUD.** |  | 5d | 2020-08-20 A | 2020-08-26 A | 100% |  |  |  | 56h | 56h | 424,280 | 424,280 |
| 33 | 1.3.3.1 | 3.3.1 Conexión base de datos. | manual | 2d | 2020-08-20 A | 2020-08-21 A | 100% |  |  | Jonathan Sierra; Geraldine Romerito | 32h | 32h | 242,480 | 242,480 |
| 34 | 1.3.3.2 | **3.3.2 Crud funcional módulos del sistema.** |  | 3d | 2020-08-24 A | 2020-08-26 A | 100% |  |  |  | 24h | 24h | 181,800 | 181,800 |
| 35 | 1.3.3.2.1 | 1.2.1 Caso de uso 001 | manual | 2d | 2020-08-24 A | 2020-08-25 A | 100% |  |  | Wilmer Perdomo | 16h | 16h | 121,200 | 121,200 |
| 36 | 1.3.3.2.2 | 1.2.2 Caso de uso n.. | manual | 1d | 2020-08-26 A | 2020-08-26 A | 100% |  |  | Wilmer Perdomo | 8h | 8h | 60,600 | 60,600 |
| 37 | 1.4 | **4 EVALUACION** |  | 8d | 2020-08-27 A | 2020-09-07 | 50% | 4d | 0d |  | 76h | 36h | 575,860 | 272,808 |
| 38 | 1.4.1 | 4.1 Modelo De Calidad | manual | 5d | 2020-08-27 A | 2020-09-02 | 90% | 0.5d |  | Jonathan Sierra; Geraldine Romerito | 44h | 36h | 333,428 | 272,808 |
| 39 | 1.4.2 | **4.2 Construcción de manuales** |  | 3d | 2020-09-03 A | 2020-09-07 |  | 3d | 0d |  | 32h |  | 242,432 |  |
| 40 | 1.4.2.1 | 4.2.1 Usuario | manual | 2d | 2020-09-03 | 2020-09-04 |  |  |  | Santiago Manjares | 16h |  | 121,232 |  |
| 41 | 1.4.2.2 | 4.2.2 Operación. | manual | 2d | 2020-09-04 | 2020-09-07 |  |  |  | Wilmer Perdomo | 16h |  | 121,200 |  |
| 42 | 1.5 | **5 construcción** |  | 140d | 2020-09-08 A | 2021-03-22 A | 100% |  |  |  | 1024h | 1024h | 7,863,720 | 7,863,720 |
| 43 | 1.5.1 | **5.1 inventario** |  | 33d | 2020-09-08 A | 2020-10-22 A | 100% |  |  |  | 336h | 336h | 2,650,760 | 2,650,760 |
| 44 | 1.5.1.1 | 5.1.1 informe de costos | manual | 10d | 2020-09-08 A | 2020-09-21 A | 100% |  |  | Jonathan Sierra | 80h | 80h | 606,240 | 606,240 |
| 45 | 1.5.1.2 | 5.1.2 Identificacion del hardware | manual | 8d | 2020-09-25 A | 2020-10-06 A | 100% |  |  | Kevin capera; Jonathan Sierra; pc´s prestamo; Rise-1-OVHcloud; GoDaddy | 64h | 64h | 549,928 | 549,928 |
| 46 | 1.5.1.3 | 5.1.3 Identificacion del Software | manual | 12d | 2020-10-07 A | 2020-10-22 A | 100% |  |  | Geraldine Romerito; Wilmer Perdomo; LUZ; Rise-1-OVHcloud; pc´s prestamo | 192h | 192h | 1,494,592 | 1,494,592 |
| 47 | 1.5.2 | **5.2 integracion continua** |  | 14d | 2020-10-23 A | 2020-11-11 A | 100% |  |  |  | 336h | 336h | 2,545,984 | 2,545,984 |
| 48 | 1.5.2.1 | 5.2.1 construccion de sistema de evidencia continua. | manual | 14d | 2020-10-23 A | 2020-11-11 A | 100% |  |  | Jonathan Sierra; Santiago Manjares; Geraldine Romerito | 336h | 336h | 2,545,984 | 2,545,984 |

| ID | WBS | Task | Type | Duration | Start | Finish | Complete | Total slack | Resources | Work | Actual work | Cost | Actual cost |
| --- | --- | --- | --- | --- | --- | --- | --- | --- | --- | --- | --- | --- | --- |
| 49 | 1.5.3 | **5.3 construccion de base datos** |  | 41d | 2021-01-25 A | 2021-03-22 A | 100% |  |  | 352h | 352h | 2,666,976 | 2,666,976 |
| 50 | 1.5.3.1 | 5.3.1 Base de datos usando DDl | manual | 5d | 2021-01-25 A | 2021-01-29 A | 100% |  | Kevin capera; Santiago Manjares | 80h | 80h | 606,160 | 606,160 |
| 51 | 1.5.3.2 | 5.3.2 Bases de datos con insercion de datos | manual | 5d | 2021-02-01 A | 2021-02-05 A | 100% |  | Wilmer Perdomo; Kevin capera | 80h | 80h | 606,080 | 606,080 |
| 52 | 1.5.3.3 | 5.3.3 Bases de datos con consulta de datos | manual | 6d | 2021-02-08 A | 2021-02-15 A | 100% |  | Jonathan Sierra; Wilmer Perdomo | 96h | 96h | 727,344 | 727,344 |
| 53 | 1.5.3.4 | 5.3.3 Bases de datos de joins usando sentencias DML | manual | 6d | 2021-03-15 A | 2021-03-22 A | 100% |  | Santiago Manjares; Geraldine Romerito | 96h | 96h | 727,392 | 727,392 |
| 54 | 1.6 | **6 Documentacion** |  | 43d | 2021-03-23 | 2021-05-20 |  | 0d |  | 688h |  | 5,213,096 |  |
| 55 | 1.6.1 | **6.1 Manuales** |  | 17d | 2021-03-23 | 2021-04-14 |  | 0d |  | 272h |  | 2,060,960 |  |
| 56 | 1.6.1.1 | 6.1.1 realizacion manual tecnico | manual | 7d | 2021-03-23 | 2021-03-31 |  |  | Geraldine Romerito; Jonathan Sierra | 112h |  | 848,680 |  |
| 57 | 1.6.1.2 | 6.1.2 manual de instalacion del aplicativo | manual | 5d | 2021-04-01 | 2021-04-07 |  |  | Wilmer Perdomo; Santiago Manjares | 80h |  | 606,080 |  |
| 58 | 1.6.1.3 | 6.1.3 documentacion de las pruebas | manual | 5d | 2021-04-08 | 2021-04-14 |  |  | Kevin capera; Jonathan Sierra | 80h |  | 606,200 |  |
| 59 | 1.6.2 | **6.2 Informes** |  | 5d | 2021-04-15 | 2021-04-21 |  | 0d |  | 80h |  | 606,200 |  |
| 60 | 1.6.2.1 | 6.2.1 Informe de migracion de datos | manual | 5d | 2021-04-15 | 2021-04-21 |  |  | Jonathan Sierra; Kevin capera | 80h |  | 606,200 |  |
| 61 | 1.6.3 | **6.3 Evidencias** |  | 13d | 2021-04-22 | 2021-05-10 |  | 0d |  | 208h |  | 1,576,016 |  |
| 62 | 1.6.3.1 | 6.3.1 pruebas del sistema | manual | 5d | 2021-04-22 | 2021-04-28 |  |  | Geraldine Romerito; Santiago Manjares | 80h |  | 606,160 |  |
| 63 | 1.6.3.2 | 6.3.2 pruebas de integridad de datos | manual | 8d | 2021-04-29 | 2021-05-10 |  |  | Santiago Manjares; Kevin capera | 128h |  | 969,856 |  |
| 64 | 1.6.4 | **6.4 Diagrama** |  | 8d | 2021-05-11 | 2021-05-20 |  | 0d |  | 128h |  | 969,920 |  |
| 65 | 1.6.4.1 | 6.4.1 Diagrama de distribucion. | manual | 8d | 2021-05-11 | 2021-05-20 |  |  | Jonathan Sierra; Geraldine Romerito | 128h |  | 969,920 |  |
| 66 | 1.7 | **7 Contratos** |  | 22d | 2021-05-21 | 2021-06-21 |  | 0d |  | 352h |  | 2,666,896 |  |
| 67 | 1.7.1 | **7.1 tabla de precios** |  | 12d | 2021-05-21 | 2021-06-07 |  | 0d |  | 192h |  | 1,454,736 |  |
| 68 | 1.7.1.1 | 7.1.1 Precios de proveedores de hardware | manual | 6d | 2021-05-21 | 2021-05-28 |  |  | Kevin capera; Santiago Manjares | 96h |  | 727,392 |  |
| 69 | 1.7.1.2 | 7.1.2 Precios de proveedores de software | manual | 6d | 2021-05-31 | 2021-06-07 |  |  | Jonathan Sierra; Wilmer Perdomo | 96h |  | 727,344 |  |
| 70 | 1.7.2 | **7.2 contratos** |  | 10d | 2021-06-08 | 2021-06-21 |  | 0d |  | 160h |  | 1,212,160 |  |
| 71 | 1.7.2.1 | 7.2.1 Contratos de desarrllo de software | manual | 10d | 2021-06-08 | 2021-06-21 |  |  | Santiago Manjares; Wilmer Perdomo | 160h |  | 1,212,160 |  |
| 72 | 1.8 | **8 cierre** |  | 23d | 2021-06-22 | 2021-07-22 |  | 0d |  | 792h |  | 6,000,808 |  |
| 73 | 1.8.1 | **8.1 modelos** |  | 11d | 2021-06-22 | 2021-07-06 |  | 0d |  | 352h |  | 2,667,016 |  |
| 74 | 1.8.1.1 | 8.1 modelos de calidad | manual | 11d | 2021-06-22 | 2021-07-06 |  |  | Geraldine Romerito; Wilmer Perdomo; Jonathan Sierra; Santiago Manjares | 352h |  | 2,667,016 |  |

| ID | WBS | Task | Type | Duration | Start | Finish | Total slack | Resources | Work | Cost |
| --- | --- | --- | --- | --- | --- | --- | --- | --- | --- | --- |
| 75 | 1.8.2 | **8.2 culminacion del proyecto** |  | 11d | 2021-07-08 | 2021-07-22 | 0d |  | 440h | 3,333,792 |
| 76 | 1.8.2.1 | 8.2.1 estimacion con casos de uso | manual | 11d | 2021-07-08 | 2021-07-22 |  | Geraldine Romerito; Wilmer Perdomo; Jonathan Sierra; Santiago Manjares; Kevin capera | 440h | 3,333,792 |
